# Projeto IAPSI

Schedule from MS Project, 2024-11-25 to 2025-01-11, costs in €, A marks actual dates.

## Calendars

- Standard: Mon-Fri 08:00-12:00, 13:00-17:00; Sat-Sun off. Exceptions (off unless hours are given): 2024-12-25 (Natal), 2025-01-01 (Ano Novo).

## Resources

| Resource |
| --- |
| Diego Teixeira |
| Eduardo Carvalho |
| Miguel Filipe |

## Schedule

| ID | WBS | Task | Type | Duration | Start | Finish | Predecessors | Complete | Remaining | Constraint | Resources | Work | Actual work | Cost | Actual cost |
| --- | --- | --- | --- | --- | --- | --- | --- | --- | --- | --- | --- | --- | --- | --- | --- |
| 1 | 1 | **Projeto** |  | 34d? | 2024-11-25 08:00 A | 2025-01-11 17:00 |  | 89% | 3.67d? |  |  | 290h | 264h | 2,900 | 2,640 |
| 2 | 1.1 | **Reunião Semanal** |  | 28.25d | 2024-11-28 08:00 A | 2025-01-09 10:00 A |  | 100% |  |  |  | 42h | 42h | 420 | 420 |
| 3 | 1.1.1 | Reunião Semanal 1 |  | 2h | 2024-11-28 08:00 A | 2024-11-28 10:00 A |  | 100% |  | start no earlier than 2024-11-28 08:00 | Diego Teixeira; Eduardo Carvalho; Miguel Filipe | 6h | 6h | 60 | 60 |
| 4 | 1.1.2 | Reunião Semanal 2 |  | 2h | 2024-12-05 08:00 A | 2024-12-05 10:00 A |  | 100% |  | start no earlier than 2024-12-05 08:00 | Diego Teixeira; Eduardo Carvalho; Miguel Filipe | 6h | 6h | 60 | 60 |
| 5 | 1.1.3 | Reunião Semanal 3 |  | 2h | 2024-12-12 08:00 A | 2024-12-12 10:00 A |  | 100% |  | start no earlier than 2024-12-12 08:00 | Diego Teixeira; Eduardo Carvalho; Miguel Filipe | 6h | 6h | 60 | 60 |
| 6 | 1.1.4 | Reunião Semanal 4 |  | 2h | 2024-12-19 08:00 A | 2024-12-19 10:00 A |  | 100% |  | start no earlier than 2024-12-19 08:00 | Diego Teixeira; Eduardo Carvalho; Miguel Filipe | 6h | 6h | 60 | 60 |
| 7 | 1.1.5 | Reunião Semanal 5 |  | 2h | 2024-12-26 08:00 A | 2024-12-26 10:00 A |  | 100% |  | start no earlier than 2024-12-26 08:00 | Diego Teixeira; Eduardo Carvalho; Miguel Filipe | 6h | 6h | 60 | 60 |
| 8 | 1.1.6 | Reunião Semanal 6 |  | 2h | 2025-01-02 08:00 A | 2025-01-02 10:00 A |  | 100% |  | start no earlier than 2025-01-02 08:00 | Diego Teixeira; Eduardo Carvalho; Miguel Filipe | 6h | 6h | 60 | 60 |
| 9 | 1.1.7 | Reunião Semanal 7 |  | 2h | 2025-01-09 08:00 A | 2025-01-09 10:00 A |  | 100% |  | start no earlier than 2025-01-09 08:00 | Diego Teixeira; Eduardo Carvalho; Miguel Filipe | 6h | 6h | 60 | 60 |
| 10 | 1.2 | **Análise e Desenho** |  | 5.75d | 2024-11-25 08:00 A | 2024-12-02 15:00 A |  | 100% |  |  |  | 56h | 56h | 560 | 560 |
| 11 | 1.2.1 | **Etapa 1** |  | 0.75d | 2024-11-25 08:00 A | 2024-11-25 15:00 A |  | 100% |  |  |  | 17h | 17h | 170 | 170 |
| 12 | 1.2.1.1 | Introdução |  | 2h | 2024-11-25 08:00 A | 2024-11-25 10:00 A |  | 100% |  |  | Eduardo Carvalho | 2h | 2h | 20 | 20 |
| 13 | 1.2.1.2 | Definição Lógica de Negócio |  | 1h | 2024-11-25 10:00 A | 2024-11-25 11:00 A | 12 | 100% |  |  | Diego Teixeira | 1h | 1h | 10 | 10 |
| 14 | 1.2.1.3 | Análise de Impacto do Sistema |  | 1h | 2024-11-25 08:00 A | 2024-11-25 09:00 A |  | 100% |  |  | Miguel Filipe | 1h | 1h | 10 | 10 |
| 15 | 1.2.1.4 | Análise Concorrencial |  | 2h | 2024-11-25 08:00 A | 2024-11-25 10:00 A |  | 100% |  |  | Diego Teixeira | 2h | 2h | 20 | 20 |
| 16 | 1.2.1.5 | Especificação de RF e RNF |  | 4h | 2024-11-25 10:00 A | 2024-11-25 15:00 A | 12 | 100% |  |  | Eduardo Carvalho; Miguel Filipe | 8h | 8h | 80 | 80 |
| 17 | 1.2.1.6 | Wireframes |  | 3h | 2024-11-25 08:00 A | 2024-11-25 11:00 A |  | 100% |  |  | Miguel Filipe | 3h | 3h | 30 | 30 |
| 18 | 1.2.1.7 | Entrega Relatório Etapa 1 | milestone | 0d | 2024-11-25 11:00 A | 2024-11-25 11:00 A | 17 | 100% |  |  |  |  |  |  |  |
| 19 | 1.2.2 | **Etapa 2** |  | 5d | 2024-11-25 15:00 A | 2024-12-02 15:00 A | 11 | 100% |  |  |  | 39h | 39h | 390 | 390 |
| 20 | 1.2.2.1 | Diagramas Casos de Uso |  | 2d | 2024-11-25 15:00 A | 2024-11-27 15:00 A |  | 100% |  |  | Eduardo Carvalho | 16h | 16h | 160 | 160 |
| 21 | 1.2.2.2 | Descrição dos Casos de Uso |  | 1d | 2024-11-27 15:00 A | 2024-11-28 15:00 A | 20 | 100% |  |  | Diego Teixeira | 8h | 8h | 80 | 80 |
| 22 | 1.2.2.3 | Stakeholders |  | 3h | 2024-11-28 15:00 A | 2024-11-29 09:00 A | 21 | 100% |  |  | Miguel Filipe | 3h | 3h | 30 | 30 |
| 23 | 1.2.2.4 | Metodologia |  | 4h | 2024-12-02 08:00 A | 2024-12-02 12:00 A | 22 | 100% |  |  | Eduardo Carvalho | 4h | 4h | 40 | 40 |
| 24 | 1.2.2.5 | Desvios |  | 2h | 2024-12-02 13:00 A | 2024-12-02 15:00 A | 23 | 100% |  |  | Miguel Filipe | 2h | 2h | 20 | 20 |
| 25 | 1.2.2.6 | Conclusão |  | 6h | 2024-11-29 08:00 A | 2024-11-29 15:00 A | 21 | 100% |  |  | Eduardo Carvalho | 6h | 6h | 60 | 60 |
| 26 | 1.2.2.7 | Entrega Relatório Etapa 2 | milestone | 0d | 2024-11-29 15:00 A | 2024-11-29 15:00 A | 25 | 100% |  |  |  |  |  |  |  |

| ID | WBS | Task | Type | Duration | Start | Finish | Predecessors | Complete | Remaining | Total slack | Resources | Work | Actual work | Cost | Actual cost |
| --- | --- | --- | --- | --- | --- | --- | --- | --- | --- | --- | --- | --- | --- | --- | --- |
| 27 | 1.3 | **Desenvolvimento** |  | 22.12d | 2024-12-02 15:00 A | 2025-01-03 16:00 | 19 | 85% | 3.29d | 5.12d |  | 192h | 166h | 1,920 | 1,660 |
| 28 | 1.3.1 | **Geral** |  | 2.44d | 2024-12-02 15:00 A | 2024-12-05 09:30 A |  | 100% |  |  |  | 27.5h | 27.5h | 275 | 275 |
| 29 | 1.3.1.1 | Criação do Repositório Git |  | 30min | 2024-12-02 15:00 A | 2024-12-02 15:30 A |  | 100% |  |  | Eduardo Carvalho | 0.5h | 0.5h | 5 | 5 |
| 30 | 1.3.1.2 | Estrutura Geral do Site |  | 4h | 2024-12-02 15:30 A | 2024-12-03 10:30 A | 29 | 100% |  |  | Eduardo Carvalho | 4h | 4h | 40 | 40 |
| 31 | 1.3.1.3 | Criação Folha de Estilo |  | 2h | 2024-12-03 10:30 A | 2024-12-03 15:30 A | 30 | 100% |  |  | Diego Teixeira | 2h | 2h | 20 | 20 |
| 32 | 1.3.1.4 | Integração com a API |  | 1d | 2024-12-03 10:30 A | 2024-12-04 13:30 A | 30 | 100% |  |  | Miguel Filipe; Eduardo Carvalho | 16h | 16h | 160 | 160 |
| 33 | 1.3.1.5 | Detalhes do País |  | 5h | 2024-12-04 13:30 A | 2024-12-05 09:30 A | 32 | 100% |  |  | Miguel Filipe | 5h | 5h | 50 | 50 |
| 34 | 1.3.2 | **Página Principal** |  | 2d | 2024-12-05 09:30 A | 2024-12-09 09:30 A | 28 | 100% |  |  |  | 16h | 16h | 160 | 160 |
| 35 | 1.3.2.1 | Estrutura da Página |  | 4h | 2024-12-05 09:30 A | 2024-12-05 14:30 A |  | 100% |  |  | Eduardo Carvalho | 4h | 4h | 40 | 40 |
| 36 | 1.3.2.2 | Integração da API |  | 8h | 2024-12-05 14:30 A | 2024-12-06 14:30 A | 35 | 100% |  |  | Diego Teixeira | 8h | 8h | 80 | 80 |
| 37 | 1.3.2.3 | Mostrar Países Aleatoriamente |  | 4h | 2024-12-06 14:30 A | 2024-12-09 09:30 A | 36 | 100% |  |  | Eduardo Carvalho | 4h | 4h | 40 | 40 |
| 38 | 1.3.2.4 | Página Principal Terminada | milestone | 0d | 2024-12-09 09:30 A | 2024-12-09 09:30 A | 37 | 100% |  |  |  |  |  |  |  |
| 39 | 1.3.3 | **Página Países** |  | 1.75d | 2024-12-09 09:30 A | 2024-12-10 16:30 A | 34 | 100% |  |  |  | 25h | 25h | 250 | 250 |
| 40 | 1.3.3.1 | Integração da API |  | 8h | 2024-12-09 09:30 A | 2024-12-10 09:30 A |  | 100% |  |  | Diego Teixeira | 8h | 8h | 80 | 80 |
| 41 | 1.3.3.2 | Mostrar Países |  | 6h | 2024-12-10 09:30 A | 2024-12-10 16:30 A | 40 | 100% |  |  | Miguel Filipe | 6h | 6h | 60 | 60 |
| 42 | 1.3.3.3 | Integração dos Filtros |  | 7h | 2024-12-09 09:30 A | 2024-12-10 08:30 A |  | 100% |  |  | Eduardo Carvalho | 7h | 7h | 70 | 70 |
| 43 | 1.3.3.4 | Função de Pesquisa |  | 4h | 2024-12-10 08:30 A | 2024-12-10 13:30 A | 42 | 100% |  |  | Eduardo Carvalho | 4h | 4h | 40 | 40 |
| 44 | 1.3.3.5 | Página Países Terminada | milestone | 0d | 2024-12-10 13:30 A | 2024-12-10 13:30 A | 43 | 100% |  |  |  |  |  |  |  |
| 45 | 1.3.4 | **Página Detalhes do País** |  | 4d | 2024-12-10 16:30 A | 2024-12-16 16:30 A | 39 | 100% |  |  |  | 30h | 30h | 300 | 300 |
| 46 | 1.3.4.1 | Estrutura |  | 8h | 2024-12-10 16:30 A | 2024-12-11 16:30 A |  | 100% |  |  | Diego Teixeira | 8h | 8h | 80 | 80 |
| 47 | 1.3.4.2 | Integração da API |  | 12h | 2024-12-11 16:30 A | 2024-12-13 14:30 A | 46 | 100% |  |  | Eduardo Carvalho | 12h | 12h | 120 | 120 |
| 48 | 1.3.4.3 | Mostrar População |  | 6h | 2024-12-13 14:30 A | 2024-12-16 11:30 A | 47 | 100% |  |  | Miguel Filipe | 6h | 6h | 60 | 60 |
| 49 | 1.3.4.4 | Mostrar Produtos associados ao País |  | 4h | 2024-12-16 11:30 A | 2024-12-16 16:30 A | 48 | 100% |  |  | Diego Teixeira | 4h | 4h | 40 | 40 |
| 50 | 1.3.4.5 | Página Detalhes Terminada | milestone | 0d | 2024-12-16 16:30 A | 2024-12-16 16:30 A | 49 | 100% |  |  |  |  |  |  |  |

| ID | WBS | Task | Type | Duration | Start | Finish | Predecessors | Complete | Total slack | Free slack | Resources | Work | Actual work | Cost | Actual cost |
| --- | --- | --- | --- | --- | --- | --- | --- | --- | --- | --- | --- | --- | --- | --- | --- |
| 51 | 1.3.5 | **Página Favoritos** |  | 6.19d | 2024-12-16 16:30 A | 2024-12-26 09:00 A | 45 | 100% |  |  |  | 39h | 39h | 390 | 390 |
| 52 | 1.3.5.1 | **Criar Lista de Favoritos** |  | 3.19d | 2024-12-16 16:30 A | 2024-12-20 09:00 A |  | 100% |  |  |  | 16h | 16h | 160 | 160 |
| 53 | 1.3.5.1.1 | Estrutura |  | 1d | 2024-12-16 16:30 A | 2024-12-18 09:30 A |  | 100% |  |  | Miguel Filipe | 8h | 8h | 80 | 80 |
| 54 | 1.3.5.1.2 | Pedidos e mostrar |  | 1d | 2024-12-18 09:30 A | 2024-12-20 09:00 A | 53 | 100% |  |  | Diego Teixeira | 8h | 8h | 80 | 80 |
| 55 | 1.3.5.2 | Adicionar Favorito |  | 1d | 2024-12-20 09:00 A | 2024-12-23 11:00 A | 54 | 100% |  |  | Eduardo Carvalho | 8h | 8h | 80 | 80 |
| 56 | 1.3.5.3 | Remover Favorito |  | 3h | 2024-12-23 11:00 A | 2024-12-23 15:00 A | 55 | 100% |  |  | Eduardo Carvalho | 3h | 3h | 30 | 30 |
| 57 | 1.3.5.4 | Ordenar Favoritos |  | 6h | 2024-12-23 15:00 A | 2024-12-24 15:00 A | 56 | 100% |  |  | Diego Teixeira | 6h | 6h | 60 | 60 |
| 58 | 1.3.5.5 | Teste da Web Storage |  | 3h | 2024-12-24 15:00 A | 2024-12-26 09:00 A | 57 | 100% |  |  | Eduardo Carvalho; Miguel Filipe | 6h | 6h | 60 | 60 |
| 59 | 1.3.5.6 | Página Favoritos Terminada | milestone | 0d | 2024-12-26 09:00 A | 2024-12-26 09:00 A | 58 | 100% |  |  |  |  |  |  |  |
| 60 | 1.3.6 | **Página Sobre** |  | 0.12d | 2024-12-26 09:00 A | 2024-12-26 10:00 A | 51 | 100% |  |  |  | 1h | 1h | 10 | 10 |
| 61 | 1.3.6.1 | Descrição da Equipa |  | 1h | 2024-12-26 09:00 A | 2024-12-26 10:00 A |  | 100% |  |  | Eduardo Carvalho | 1h | 1h | 10 | 10 |
| 62 | 1.3.6.2 | Página Sobre Terminada | milestone | 0d | 2024-12-26 10:00 A | 2024-12-26 10:00 A | 61 | 100% |  |  |  |  |  |  |  |
| 63 | 1.3.7 | **Página Contactos** |  | 0.12d | 2024-12-26 10:00 A | 2024-12-26 11:00 A | 60 | 100% |  |  |  | 1.5h | 1.5h | 15 | 15 |
| 64 | 1.3.7.1 | Formulário de Contacto |  | 1h | 2024-12-26 10:00 A | 2024-12-26 11:00 A |  | 100% |  |  | Diego Teixeira | 1h | 1h | 10 | 10 |
| 65 | 1.3.7.2 | Links para Redes Sociais |  | 30min | 2024-12-26 10:00 A | 2024-12-26 10:30 A |  | 100% |  |  | Miguel Filipe | 0.5h | 0.5h | 5 | 5 |
| 66 | 1.3.7.3 | Página Contactos Terminada | milestone | 0d | 2024-12-26 10:30 A | 2024-12-26 10:30 A | 65 | 100% |  |  |  |  |  |  |  |
| 67 | 1.3.8 | **Página Loja** |  | 2d | 2024-12-26 13:00 | 2024-12-30 12:00 | 63 |  | 5.75d | 0d |  | 12h |  | 120 |  |
| 68 | 1.3.8.1 | Mostrar Produtos |  | 2h | 2024-12-26 13:00 | 2024-12-26 15:00 |  |  | 5.75d | 0d | Miguel Filipe | 2h |  | 20 |  |
| 69 | 1.3.8.2 | Filtrar por País |  | 2h | 2024-12-26 15:00 | 2024-12-26 17:00 | 68 |  | 6.38d | 0d | Eduardo Carvalho | 2h |  | 20 |  |
| 70 | 1.3.8.3 | Filtrar por Moeda |  | 4h | 2024-12-30 08:00 | 2024-12-30 12:00 | 68 |  | 7.5d |  | Eduardo Carvalho | 4h |  | 40 |  |
| 71 | 1.3.8.4 | Adicionar ao Carrinho de Compras |  | 4h | 2024-12-27 08:00 | 2024-12-27 12:00 | 69 |  | 6.38d | 0d | Diego Teixeira | 4h |  | 40 |  |
| 72 | 1.3.8.5 | Página Loja Terminada | milestone | 0d | 2024-12-27 12:00 | 2024-12-27 12:00 | 71 |  | 6.38d |  |  |  |  |  |  |
| 73 | 1.3.9 | **Página Carrinho** |  | 1d | 2024-12-30 13:00 | 2024-12-31 12:00 | 67 |  | 7.5d |  |  | 14h |  | 140 |  |
| 74 | 1.3.9.1 | Aumentar ou Diminuir Quantidade |  | 2h | 2024-12-30 13:00 | 2024-12-30 15:00 |  |  | 6.12d |  | Eduardo Carvalho | 2h |  | 20 |  |
| 75 | 1.3.9.2 | Adicionar Botão de Remover Produto |  | 4h | 2024-12-30 13:00 | 2024-12-30 17:00 |  |  | 5.88d |  | Miguel Filipe | 4h |  | 40 |  |
| 76 | 1.3.9.3 | Finalizar Compra |  | 4h | 2024-12-30 13:00 | 2024-12-30 17:00 |  |  | 7.5d | 0d | Diego Teixeira | 4h |  | 40 |  |
| 77 | 1.3.9.4 | Calcular Custos de Entrega |  | 2h | 2024-12-31 08:00 | 2024-12-31 10:00 | 76 |  | 7.5d | 0d | Eduardo Carvalho | 2h |  | 20 |  |
| 78 | 1.3.9.5 | Métodos de Pagamento |  | 2h | 2024-12-31 10:00 | 2024-12-31 12:00 | 77 |  | 7.5d | 0d | Diego Teixeira | 2h |  | 20 |  |
| 79 | 1.3.9.6 | Página Carrinho Terminada | milestone | 0d | 2024-12-31 12:00 | 2024-12-31 12:00 | 78 |  | 7.5d |  | Miguel Filipe |  |  |  |  |

| ID | WBS | Task | Type | Duration | Start | Finish | Predecessors | Complete | Resources | Work | Actual work | Cost | Actual cost |
| --- | --- | --- | --- | --- | --- | --- | --- | --- | --- | --- | --- | --- | --- |
| 80 | 1.3.10 | **Testes** |  | 2.38d | 2024-12-31 13:00 A | 2025-01-03 16:00 A | 73 | 100% |  | 26h | 26h | 260 | 260 |
| 81 | 1.3.10.1 | Testes Gerais |  | 4h | 2024-12-31 13:00 A | 2024-12-31 17:00 A | 73 | 100% | Diego Teixeira | 4h | 4h | 40 | 40 |
| 82 | 1.3.10.2 | Testes de Usabilidade |  | 3h | 2024-12-31 13:00 A | 2024-12-31 16:00 A |  | 100% | Miguel Filipe | 3h | 3h | 30 | 30 |
| 83 | 1.3.10.3 | Testes de Eficiência |  | 3h | 2024-12-31 15:00 A | 2025-01-02 14:00 A |  | 100% | Eduardo Carvalho | 3h | 3h | 30 | 30 |
| 84 | 1.3.10.4 | Testes de Fiabilidade |  | 4h | 2025-01-02 14:00 A | 2025-01-03 09:00 A | 83 | 100% | Eduardo Carvalho | 4h | 4h | 40 | 40 |
| 85 | 1.3.10.5 | Correção de Erros Críticos |  | 6h | 2025-01-03 09:00 A | 2025-01-03 16:00 A | 84 | 100% | Diego Teixeira; Miguel Filipe | 12h | 12h | 120 | 120 |
| 86 | 1.3.11 | Entrega Software Funcional | milestone | 0d | 2025-01-03 16:00 A | 2025-01-03 16:00 A | 85 | 100% |  |  |  |  |  |
